# Elise第四次迭代开发进度表

Schedule from MS Project, 2017-10-23 to 2017-11-28, A marks actual dates.
Microsoft

## Calendars

- 标准: Mon-Fri 08:00-12:00, 13:00-17:00; Sat-Sun off.

## Resources

| Resource |
| --- |
| 聂嘉文 |
| Elise小组 |
| 张圣宝 |
| 夏湘东 |
| 刘浩锋 |
| 肖友华 |

## Schedule

| ID | Task | Type | Duration | Start | Finish | Predecessors | Complete | Total slack | Free slack | Constraint | Resources | Work | Actual work |
| --- | --- | --- | --- | --- | --- | --- | --- | --- | --- | --- | --- | --- | --- |
| 1 | 原型设计评审 |  | 1d | 2017-10-23 A | 2017-10-23 A |  | 100% |  |  | finish no earlier than 2017-10-23 | Elise小组 | 8h | 8h |
| 2 | 原型设计整合与工作内容梳理 |  | 1d | 2017-10-24 A | 2017-10-24 A | 1 | 100% |  |  |  | 聂嘉文 | 8h | 8h |
| 3 | 原型设计二次评审、工作计划制定 |  | 1d | 2017-10-25 A | 2017-10-25 A | 2 | 100% |  |  |  | Elise小组 | 8h | 8h |
| 4 | Web接口文档与概要设计 |  | 3d | 2017-10-26 | 2017-10-30 | 3 |  | 21d |  | finish no earlier than 2017-10-30 | 聂嘉文; 张圣宝; 刘浩锋; 夏湘东; 肖友华 | 120h |  |
| 5 | 爬虫打点统计概要设计 | manual | 1d | 2017-10-26 | 2017-10-26 | 3 |  |  |  |  | 聂嘉文 | 8h |  |
| 6 | 页面模型在线采集概要设计 | manual | 2d | 2017-10-26 | 2017-10-27 | 3 |  |  |  |  | 夏湘东 | 16h |  |
| 7 | Web界面-站点高级设置-账号设置 |  | 2d | 2017-10-31 | 2017-11-01 |  |  | 19d |  | finish no earlier than 2017-11-01 | 刘浩锋 | 16h |  |
| 8 | Web界面-站点高级设置-登录页面号设置 | milestone | 0d | 2017-11-01 | 2017-11-01 |  |  | 19d |  | finish no earlier than 2017-11-01 | 刘浩锋 |  |  |
| 9 | Web界面-站点高级设置-手动录入Cookies设置 | milestone | 0d | 2017-11-01 | 2017-11-01 |  |  | 19d |  | finish no earlier than 2017-11-01 | 刘浩锋 |  |  |
| 10 | Web界面-页面模型-浏览器采集配置 |  | 1d | 2017-10-31 | 2017-10-31 |  |  | 20d |  | finish no earlier than 2017-10-31 | 肖友华 | 8h |  |
| 11 | Web界面-页面模型-翻页采集配置 |  | 1d | 2017-11-01 | 2017-11-01 |  |  | 19d |  | finish no earlier than 2017-11-01 | 肖友华 | 8h |  |
| 12 | Web后台-页面模型-浏览器采集配置接口 |  | 3d | 2017-10-31 | 2017-11-02 |  |  | 18d |  | finish no earlier than 2017-11-02 | 张圣宝 | 24h |  |
| 13 | Web后台-页面模型-翻页采集配置接口 |  | 1d | 2017-11-03 | 2017-11-03 |  |  | 17d |  | finish no earlier than 2017-11-03 | 张圣宝 | 8h |  |
| 14 | 采集器-采集线程守护 |  | 2d | 2017-10-30 | 2017-10-31 |  |  | 20d |  | finish no earlier than 2017-10-31 | 聂嘉文 | 16h |  |
| 15 | 采集器-打点统计 |  | 3d | 2017-11-01 | 2017-11-03 |  |  | 17d |  | finish no earlier than 2017-11-03 | 聂嘉文 | 24h |  |
| 16 | 页面模型在线采集测试服务 |  | 4d | 2017-10-30 | 2017-11-02 |  |  | 16d | 0d | finish no earlier than 2017-11-02 | 夏湘东 | 32h |  |
| 17 | Web界面-用户管理-账户管理 |  | 2d | 2017-11-02 | 2017-11-03 |  |  | 17d |  | finish no earlier than 2017-11-03 | 刘浩锋 | 16h |  |
| 18 | Web界面-任务管理-状态操作 |  | 2d | 2017-11-06 | 2017-11-07 |  |  | 15d |  | finish no earlier than 2017-11-07 | 刘浩锋 | 16h |  |
| 19 | Web界面-任务的采集进度、抽取率显示 | milestone | 0d | 2017-11-07 | 2017-11-07 |  |  | 15d |  | finish no earlier than 2017-11-07 | 刘浩锋 |  |  |
| 20 | Web界面-页面模型在线测试页面 |  | 1d | 2017-11-02 | 2017-11-02 |  |  | 16d | 0d | finish no earlier than 2017-11-02 | 肖友华 | 8h |  |
| 21 | Web界面-页面模型在线测试页面联调 |  | 2d | 2017-11-03 | 2017-11-06 | 16, 20 |  | 16d |  | finish no earlier than 2017-11-06 | 夏湘东; 肖友华 | 32h |  |
| 22 | Web后台-站点管理-账号设置 |  | 1d | 2017-11-06 | 2017-11-06 |  |  | 16d |  | finish no earlier than 2017-11-06 | 张圣宝 | 8h |  |
| 23 | Web后台-站点管理-登录页面设置接口 |  | 1d | 2017-11-07 | 2017-11-07 |  |  | 15d |  | finish no earlier than 2017-11-07 | 张圣宝 | 8h |  |
| 24 | 日志收集与分析-日志技术预研 |  | 2d | 2017-11-06 | 2017-11-07 |  |  | 15d |  | finish no earlier than 2017-11-07 | 夏湘东 | 16h |  |
| 25 | 日志收集与分析-日志设计 |  | 3d | 2017-11-08 | 2017-11-10 |  |  | 12d |  | finish no earlier than 2017-11-10 | 聂嘉文; 夏湘东 | 48h |  |
| 26 | 日志收集与分析-日志收集Demo |  | 3d | 2017-11-06 | 2017-11-08 |  |  | 14d |  | finish no earlier than 2017-11-08 | 聂嘉文 | 24h |  |
| 27 | 日志收集与分析-日志收集 |  | 3d | 2017-11-09 | 2017-11-13 |  |  | 11d |  | finish no earlier than 2017-11-13 | 聂嘉文 | 24h |  |
| 28 | 日志收集与分析-日志查询接口服务设计 |  | 2d | 2017-11-13 | 2017-11-14 |  |  | 10d |  | finish no earlier than 2017-11-14 | 夏湘东 | 16h |  |
| 29 | 日志收集与分析-日志查询接口服务编码实现 |  | 3d | 2017-11-15 | 2017-11-17 |  |  | 7d |  | finish no earlier than 2017-11-17 | 夏湘东 | 24h |  |
| 30 | Web界面-日志查询-运行日志 |  | 1d | 2017-11-07 | 2017-11-07 |  |  | 13d | 0d | finish no earlier than 2017-11-07 | 肖友华 | 8h |  |
| 31 | Web界面-日志查询-日志统计 |  | 2d | 2017-11-08 | 2017-11-09 | 30 |  | 13d |  | finish no earlier than 2017-11-09 | 肖友华 | 16h |  |
| 32 | Web后台-站点管理-Cookies设置接口 |  | 2d | 2017-11-08 | 2017-11-09 |  |  | 13d |  | finish no earlier than 2017-11-09 | 张圣宝 | 16h |  |
| 33 | Web后台-任务的采集进度、抽取率统计接口 |  | 2d? | 2017-11-15 | 2017-11-16 |  |  | 8d |  | finish no earlier than 2017-11-16 | 张圣宝 | 16h |  |
| 34 | Web后台-任务操控接口 |  | 1d? | 2017-11-17 | 2017-11-17 |  |  | 7d |  | finish no earlier than 2017-11-17 | 张圣宝 | 8h |  |
| 35 | Web后台-用户管理-账户管理 |  | 1d | 2017-11-20 | 2017-11-20 |  |  | 6d |  | finish no earlier than 2017-11-20 | 张圣宝 | 8h |  |
| 36 | Web后台-任务周期执行 |  | 3d | 2017-11-14 | 2017-11-16 |  |  | 8d |  | finish no earlier than 2017-11-16 | 聂嘉文 | 24h |  |
| 37 | Web后台-采集配置修改同步到Redis，并设置对应的版本号 |  | 2d | 2017-11-17 | 2017-11-20 |  |  | 6d |  | finish no earlier than 2017-11-20 | 聂嘉文 | 16h |  |
| 38 | Web后台-多租户设计第一阶段（权限设置） |  | 0.5d | 2017-11-21 | 2017-11-21 |  |  | 5.38d |  | start no earlier than 2017-11-21 | 张圣宝 | 4h |  |
| 39 | Web后台-日志查询-运行日志 |  | 2d | 2017-11-21 | 2017-11-22 |  |  | 4d |  | finish no earlier than 2017-11-22 | 张圣宝 | 16h |  |
| 40 | Web后台-日志查询-日志统计 |  | 1d | 2017-11-23 | 2017-11-23 |  |  | 3d |  | finish no earlier than 2017-11-23 | 张圣宝 | 8h |  |
| 41 | 采集器-采集程序Linux打包部署 |  | 2d | 2017-11-21 | 2017-11-22 |  |  | 4d |  | finish no earlier than 2017-11-22 | 聂嘉文 | 16h |  |
| 42 | Web界面-日志联调 |  | 2d | 2017-11-20 | 2017-11-21 |  |  | 5d |  | finish no earlier than 2017-11-21 | 夏湘东; 肖友华 | 32h |  |
| 43 | 采集器-采集进程监控、守护调研 |  | 2d | 2017-11-22 | 2017-11-23 |  |  | 3d |  | finish no earlier than 2017-11-23 | 夏湘东 | 16h |  |
| 44 | 采集器-采集进程监控、守护实现 |  | 3d | 2017-11-24 | 2017-11-28 |  |  | 0d |  | finish no earlier than 2017-11-28 | 夏湘东 | 24h |  |
