# 软件开发

Schedule from MS Project, 2017-07-17 to 2017-09-29.

## Calendars

- 标准: Mon-Fri 08:00-12:00, 13:00-17:00; Sat-Sun off.

## Resources

| Resource |
| --- |
| 管理人员 |
| 项目经理 |
| 分析人员 |
| 开发人员 |
| 测试人员 |
| 培训人员 |
| 技术联络人员 |
| 部署小组 |
| 张正乾 |
| 夏湘东 |
| 刘浩峰 |
| 聂嘉文 |
| 卢蜡梅 |

## Schedule

| ID | WBS | Task | Duration | Start | Finish | Predecessors | Total slack | Free slack | Constraint | Resources | Work |
| --- | --- | --- | --- | --- | --- | --- | --- | --- | --- | --- | --- |
| 1 | 1 | **项目范围规划与需求分析** | 10d | 2017-07-17 | 2017-07-28 |  | 0d |  |  |  | 168h |
| 2 | 1.1 | 确定项目范围 | 1d | 2017-07-17 | 2017-07-17 |  | 0d |  | start no earlier than 2017-07-17 | 张正乾 | 8h |
| 3 | 1.2 | 研发计划制定 | 1d | 2017-07-18 | 2017-07-18 | 2 | 0d |  |  | 张正乾 | 8h |
| 4 | 1.3 | 数据库设计 | 3d | 2017-07-19 | 2017-07-21 | 3 | 0d |  |  | 夏湘东 | 24h |
| 5 | 1.4 | 配置管理界面设计 | 1d | 2017-07-19 | 2017-07-19 | 3 | 2d | 0d |  | 张正乾 | 8h |
| 6 | 1.5 | 架构设计并完成基本框架搭建 | 5d | 2017-07-20 | 2017-07-26 | 5 | 2d |  |  | 张正乾 | 40h |
| 7 | 1.6 | 需求整理 | 5d | 2017-07-24 | 2017-07-28 | 4 | 0d |  |  | 夏湘东; 聂嘉文 | 80h |
| 8 | 2 | **第一迭代周期** | 15d | 2017-07-31 | 2017-08-18 | 1 |  |  |  |  | 264h |
| 9 | 2.1 | **研发阶段** | 12d | 2017-07-31 | 2017-08-15 |  | 0d |  |  |  | 240h |
| 10 | 2.1.1 | (配置管理)前端整体界面 | 3d | 2017-07-31 | 2017-08-02 |  | 0d |  |  | 刘浩峰 | 24h |
| 11 | 2.1.2 | (配置管理)种子管理 | 5d | 2017-08-03 | 2017-08-09 | 10 | 0d |  |  | 刘浩峰 | 40h |
| 12 | 2.1.3 | (RPC服务)前端提供服务接口（种子管理） | 2d | 2017-07-31 | 2017-08-01 |  | 2d | 0d |  | 夏湘东 | 16h |
| 13 | 2.1.4 | (RPC服务)获取任务 | 1d | 2017-08-02 | 2017-08-02 | 12 | 2d | 0d |  | 夏湘东 | 8h |
| 14 | 2.1.5 | (RPC服务)提供服务 | 1d | 2017-08-03 | 2017-08-03 | 13 | 2d | 0d |  | 夏湘东 | 8h |
| 15 | 2.1.6 | (爬虫)整体框架搭建 | 4d | 2017-07-31 | 2017-08-03 |  | 1d | 0d |  | 聂嘉文 | 32h |
| 16 | 2.1.7 | (爬虫)rpc任务获取 | 1d | 2017-08-04 | 2017-08-04 | 15 | 1d | 0d |  | 聂嘉文 | 8h |
| 17 | 2.1.8 | (爬虫)判断URL去重，添加去重的redis队列 | 1d | 2017-08-07 | 2017-08-07 | 16 | 1d | 0d |  | 聂嘉文 | 8h |
| 18 | 2.1.9 | (爬虫)一般URL数据加载 | 1d | 2017-08-08 | 2017-08-08 | 17 | 1d |  |  | 聂嘉文 | 8h |
| 19 | 2.1.10 | (爬虫)XPTAH和正则数据解析 | 2d | 2017-08-04 | 2017-08-07 | 14 | 2d | 0d |  | 夏湘东 | 16h |
| 20 | 2.1.11 | (爬虫)输出结果mongodb | 1d | 2017-08-08 | 2017-08-08 | 19 | 5d |  |  | 夏湘东 | 8h |
| 21 | 2.1.12 | 整体调试 | 4d | 2017-08-10 | 2017-08-15 | 11, 18, 19 | 0d |  |  | 夏湘东; 聂嘉文 | 64h |
| 22 | 2.2 | **测试阶段** | 3d | 2017-08-16 | 2017-08-18 | 9 | 0d |  |  |  | 24h |
| 23 | 2.2.1 | 开始测试 | 3d | 2017-08-16 | 2017-08-18 |  | 0d |  |  | 卢蜡梅 | 24h |
| 24 | 3 | **第二迭代周期** | 15d | 2017-08-21 | 2017-09-08 | 8 |  |  |  |  | 296h |
| 25 | 3.1 | **研发阶段** | 11d | 2017-08-21 | 2017-09-04 |  | 1d | 0d |  |  | 272h |
| 26 | 3.1.1 | (配置管理)站点管理 | 3d | 2017-08-21 | 2017-08-23 |  | 6d | 0d |  | 刘浩峰 | 24h |
| 27 | 3.1.2 | (配置管理)规则，页面规则管理（页面模型） | 3d | 2017-08-24 | 2017-08-28 | 26 | 6d |  |  | 刘浩峰 | 24h |
| 28 | 3.1.3 | (RPC服务)提供站点规则相关的接口 | 2d | 2017-08-21 | 2017-08-22 |  | 5d | 0d |  | 夏湘东 | 16h |
| 29 | 3.1.4 | (爬虫)设置代理采集 | 1d | 2017-08-21 | 2017-08-21 |  | 1d | 0d |  | 聂嘉文 | 8h |
| 30 | 3.1.5 | (爬虫)浏览器1采集 | 5d | 2017-08-23 | 2017-08-29 | 28 | 5d |  |  | 夏湘东 | 40h |
| 31 | 3.1.6 | (爬虫)浏览器2采集 | 5d | 2017-08-22 | 2017-08-28 | 29 | 1d | 0d |  | 聂嘉文 | 40h |
| 32 | 3.1.7 | (爬虫)mongdo数据外网=>内网数据同步 | 10d | 2017-08-21 | 2017-09-01 |  | 2d |  |  | 张正乾 | 80h |
| 33 | 3.1.8 | (爬虫)输出日志 | 5d | 2017-08-29 | 2017-09-04 | 31 | 1d |  |  | 聂嘉文 | 40h |

| ID | WBS | Task | Duration | Start | Finish | Predecessors | Total slack | Free slack | Resources | Work |
| --- | --- | --- | --- | --- | --- | --- | --- | --- | --- | --- |
| 34 | 3.2 | **测试阶段** | 3d | 2017-09-05 | 2017-09-07 | 25 | 1d |  |  | 24h |
| 35 | 3.2.1 | 开始测试 | 3d | 2017-09-05 | 2017-09-07 |  | 1d |  | 卢蜡梅 | 24h |
| 36 | 4 | **第三迭代周期** | 15d | 2017-09-11 | 2017-09-29 | 24 |  |  |  | 200h |
| 37 | 4.1 | **研发阶段** | 12d | 2017-09-11 | 2017-09-26 |  |  |  |  | 176h |
| 38 | 4.1.1 | (配置管理)日志查询 | 2d | 2017-09-11 | 2017-09-12 |  | 5d | 0d | 刘浩峰 | 16h |
| 39 | 4.1.2 | (配置管理)日志统计分析 | 2d | 2017-09-13 | 2017-09-14 | 38 | 5d | 0d | 刘浩峰 | 16h |
| 40 | 4.1.3 | (配置管理)采集结果查询 | 3d | 2017-09-15 | 2017-09-19 | 39 | 5d |  | 刘浩峰 | 24h |
| 41 | 4.1.4 | (RPC服务)提供前端相关接口 | 3d | 2017-09-11 | 2017-09-13 |  | 4d | 0d | 夏湘东 | 24h |
| 42 | 4.1.5 | (爬虫)数据订阅，根据用户的需要，发布给消息中间件 | 3d | 2017-09-11 | 2017-09-13 |  | 9d |  | 聂嘉文 | 24h |
| 43 | 4.1.6 | (爬虫)守护程序 | 1d | 2017-09-14 | 2017-09-14 | 41 | 4d | 0d | 夏湘东 | 8h |
| 44 | 4.1.7 | 验证码 | 4d | 2017-09-15 | 2017-09-20 | 43 | 4d |  | 聂嘉文; 夏湘东 | 64h |
| 45 | 4.2 | **测试阶段** | 3d | 2017-09-27 | 2017-09-29 | 37 | 0d |  |  | 24h |
| 46 | 4.2.1 | 开始测试 | 3d | 2017-09-27 | 2017-09-29 |  | 0d |  | 卢蜡梅 | 24h |
